# 理财产品管理系统

How a schedule from MS Project changed from version to version. A marks actual dates.

## Version 1 (saved 2019-06-11)

Note of the change: 项目计划书

| ID | WBS | Task | Duration | Start | Finish | Predecessors | Complete | Total float | Constraint |
| --- | --- | --- | --- | --- | --- | --- | --- | --- | --- |
| 1 | 1 | **启动** | 1d | 2019-06-06 08:00 A | 2019-06-06 17:00 |  | 25% |  |  |
| 2 |  | 识别干系人 | 0.25d | 2019-06-06 08:00 A | 2019-06-06 10:00 |  |  |  | start no earlier than 2018-10-01 08:00 |
| 3 |  | 制定项目章程 | 0.25d | 2019-06-06 08:00 A | 2019-06-06 10:00 A | 2 | 100% |  |  |
| 4 |  | 项目启动会议 | 0.25d | 2019-06-06 10:00 | 2019-06-06 12:00 | 3 |  | 0.5d | start no earlier than 2019-06-06 08:00 |
| 5 |  | 完成项目启动 | 0.25d | 2019-06-06 15:00 | 2019-06-06 17:00 | 4 |  | 0.25d | finish no earlier than 2019-06-06 17:00 |
| 6 | 2 | **计划** | 22d | 2019-06-07 08:00 | 2019-06-28 17:00 |  | 85% |  |  |
| 7 |  | 确定项目范围 | 0.5d | 2019-06-07 08:00 A | 2019-06-07 12:00 | 5 | 50% | 0d |  |
| 8 |  | 确定组织架构 | 0.5d | 2019-06-07 08:00 A | 2019-06-07 15:00 | 7 | 50% | 0.95d |  |
| 9 |  | 确定交付物 | 0.3d | 2019-06-08 14:36 | 2019-06-08 17:00 | 8 |  | 0d | finish no earlier than 2019-06-08 17:00 |
| 10 |  | 确定项目资源 | 0.5d | 2019-06-09 08:00 | 2019-06-09 12:00 | 9 |  | 0d | finish no earlier than 2019-06-08 17:00 |
| 11 |  | 确定项目预算 | 0.5d | 2019-06-09 08:00 A | 2019-06-09 17:00 | 10 |  |  | finish no earlier than 2019-06-09 17:00 |
| 12 |  | 确定时间里程碑计划 | 0.5d | 2019-06-09 08:00 A | 2019-06-10 12:00 | 11 |  |  | finish no earlier than 2019-06-09 17:00 |
| 13 |  | 制定项目计划 | 0.5d | 2019-06-10 08:00 A | 2019-06-10 12:00 A | 12 | 100% |  | finish no earlier than 2019-06-10 17:00 |
| 14 |  | 完成项目计划 | 0.5d | 2019-06-10 13:00 | 2019-06-10 17:00 | 13 |  | 18d |  |
| 15 | 2.9 | **学习SSM开发** | 23d | 2019-06-06 08:00 A | 2019-06-28 17:00 A |  | 100% |  |  |
| 16 |  | 第1次学习 | 3d | 2019-06-06 08:00 A | 2019-06-08 17:00 A | 89 | 100% |  |  |
| 17 |  | 第2次学习 | 3d | 2019-06-12 08:00 A | 2019-06-14 17:00 A | 90 | 100% |  |  |
| 18 |  | 第3次学习 | 3d | 2019-06-16 08:00 A | 2019-06-18 17:00 A | 36 | 100% |  |  |
| 19 |  | 第4次学习 | 3d | 2019-06-20 08:00 A | 2019-06-22 17:00 A | 46 | 100% |  |  |
| 20 |  | 第5次学习 | 3d | 2019-06-26 08:00 A | 2019-06-28 17:00 A | 63 | 100% |  | finish no earlier than 2019-06-28 17:00 |
| 21 | 3 | **执行** | 17d? | 2019-06-11 08:00 | 2019-06-27 17:00 |  | 65% |  |  |
| 22 | 3.1 | **可行性分析** | 1d | 2019-06-11 08:00 A | 2019-06-11 17:00 A |  | 100% |  |  |
| 23 |  | 完成开题报告与可行性分析 | 1d | 2019-06-11 08:00 A | 2019-06-11 17:00 A | 14 | 100% |  |  |
| 24 | 3.2 | **需求分析** | 3d | 2019-06-11 08:00 A | 2019-06-13 17:00 |  | 17% |  |  |
| 25 | 3.2.1 | **功能性需求分析** | 3d | 2019-06-11 08:00 | 2019-06-13 17:00 |  |  |  |  |
| 26 |  | 产品录入模块需求分析 | 2d | 2019-06-11 08:00 | 2019-06-12 17:00 | 89 |  | 39d |  |
| 27 |  | 产品审核模块需求分析 | 2d | 2019-06-11 08:00 | 2019-06-12 17:00 | 89 |  | 39d |  |
| 28 |  | 产品配置模块需求分析 | 2d | 2019-06-11 08:00 | 2019-06-12 17:00 | 89 |  | 39d |  |
| 29 |  | 管理员模块需求分析 | 2d | 2019-06-11 08:00 | 2019-06-12 17:00 | 89 |  | 39d | start no earlier than 2019-06-11 08:00 |
| 30 |  | 用户评价模块需求分析 | 2d | 2019-06-11 08:00 | 2019-06-12 17:00 | 89 |  | 39d |  |
| 31 |  | 展示模块需求分析 | 2d | 2019-06-11 08:00 | 2019-06-12 17:00 | 89 |  | 39d |  |
| 32 |  | 供应商管理模块需求分析 | 2d | 2019-06-11 08:00 | 2019-06-12 17:00 | 89 |  | 39d |  |
| 33 |  | 非功能性需求分析 | 1d | 2019-06-12 08:00 A | 2019-06-12 17:00 A | 90 | 100% |  |  |
| 34 |  | 制作原型 | 1d | 2019-06-12 08:00 A | 2019-06-12 17:00 A | 33 | 100% |  |  |
| 35 |  | 需求评审会议 | 1d | 2019-06-12 08:00 A | 2019-06-12 17:00 A | 33, 34, 17 | 100% |  |  |
| 36 |  | 完成需求分析 | 1d | 2019-06-12 08:00 A | 2019-06-13 17:00 | 35 |  | 38d |  |
| 37 | 3.3 | **设计** | 5d | 2019-06-13 08:00 A | 2019-06-17 17:00 |  | 65% |  |  |
| 38 | 3.3.1 | **概要设计** | 2d | 2019-06-13 08:00 A | 2019-06-14 17:00 |  | 90% |  |  |
| 39 | 3.3.1.1 | **系统结构设计** | 1d | 2019-06-13 08:00 A | 2019-06-13 17:00 |  | 100% |  |  |
| 40 |  | 系统逻辑架构 | 0.5d | 2019-06-13 08:00 A | 2019-06-13 12:00 A | 36 | 100% |  |  |
| 41 |  | 系统物理结构 | 0.5d | 2019-06-13 08:00 A | 2019-06-13 12:00 A | 40 | 100% |  |  |
| 42 |  | 系统接口设计 | 0.2d | 2019-06-14 08:00 A | 2019-06-14 09:36 A | 36 | 100% |  |  |
| 43 |  | 约束和假定 | 0.2d | 2019-06-14 08:00 A | 2019-06-14 09:36 A | 42 | 100% |  |  |
| 44 |  | 非功能性设计 | 0.2d | 2019-06-14 08:00 A | 2019-06-14 09:36 A | 43 | 100% |  |  |
| 45 |  | 概要设计评审会议 | 0.2d | 2019-06-14 08:00 A | 2019-06-14 09:36 A | 41, 44, 18 | 100% |  |  |
| 46 |  | 完成概要设计 | 0.2d | 2019-06-14 08:00 A | 2019-06-14 11:12 | 45 |  | 37.6d |  |
| 47 | 3.3.2 | **详细设计** | 2d | 2019-06-16 08:00 A | 2019-06-17 17:00 |  | 58% |  |  |
| 48 |  | 对象模型 | 0.5d | 2019-06-16 08:00 A | 2019-06-16 12:00 A | 60 | 100% |  |  |
| 49 |  | 产品录入模块详细设计 | 1.5d | 2019-06-16 08:00 A | 2019-06-17 12:00 | 48 | 67% | 34.5d |  |
| 50 |  | 产品审核模块详细设计 | 1.5d | 2019-06-16 08:00 A | 2019-06-17 12:00 A | 48 | 100% |  |  |
| 51 |  | 产品配置模块详细设计 | 1.5d | 2019-06-16 08:00 A | 2019-06-17 12:00 A | 48 | 100% |  |  |
| 52 |  | 管理员模块详细设计 | 1.5d | 2019-06-16 08:00 A | 2019-06-17 12:00 A | 48 | 100% |  |  |
| 53 |  | 用户评价模块详细分析 | 1.5d | 2019-06-16 13:00 | 2019-06-17 17:00 | 48 |  | 34d |  |
| 54 |  | 供应商管理模块详细设计 | 1.5d | 2019-06-16 13:00 | 2019-06-17 17:00 | 48 |  | 34d |  |
| 55 |  | 展示模块详细分析 | 1.5d | 2019-06-16 13:00 | 2019-06-17 17:00 | 48 |  | 34d |  |
| 56 |  | 详细设计评审会议 | 1d | 2019-06-17 08:00 A | 2019-06-17 17:00 A | 50, 51, 55, 18 | 100% |  | finish no earlier than 2019-06-17 17:00 |
| 57 |  | 完成详细设计 | 0d | 2019-06-17 08:00 A | 2019-06-17 08:00 A | 56 | 100% |  |  |
| 58 | 3.3.3 | **系统数据模型设计** | 1d | 2019-06-15 08:00 A | 2019-06-15 17:00 |  | 80% |  |  |
| 59 |  | 系统概念模型 | 0.5d | 2019-06-15 08:00 A | 2019-06-15 12:00 A | 46 | 100% |  |  |
| 60 |  | 系统物理模型 | 0.5d | 2019-06-15 08:00 A | 2019-06-15 12:00 A | 59 | 100% |  |  |
| 61 |  | 数据字典 | 0.5d | 2019-06-15 08:00 A | 2019-06-15 12:00 A | 60 | 100% |  |  |
| 62 |  | 系统数据模型设计评审会议 | 0.5d | 2019-06-15 08:00 A | 2019-06-15 12:00 A | 61, 19 | 100% |  |  |
| 63 |  | 完成系统数据模型设计 | 0.5d | 2019-06-15 08:00 A | 2019-06-15 17:00 | 62 |  | 36d |  |
| 64 | 3.4 | **开发** | 152.75d | 2018-11-13 08:00 A | 2019-06-11 15:00 |  | 87% | 40.25d |  |
| 65 |  | 领域模型对象开发 | 1d | 2018-11-13 08:00 A | 2018-11-13 17:00 A | 57, 63 | 100% |  |  |
| 66 | 3.4.2 | **jsp开发** | 151.75d | 2018-11-14 08:00 A | 2019-06-11 15:00 |  | 88% | 40.25d |  |
| 67 |  | 认证用户模块jsp开发 | 1.5d | 2018-11-14 08:00 A | 2018-11-15 12:00 A | 65 | 100% |  |  |
| 68 |  | 管理员模块jsp开发 | 1.5d | 2018-11-15 13:00 A | 2018-11-16 17:00 A | 67 | 100% |  |  |
| 69 |  | 教师模块jsp开发 | 1.5d | 2018-11-14 08:00 A | 2019-06-11 11:00 | 65 | 75% | 0d |  |
| 70 |  | 学生模块jsp开发 | 1.5d | 2018-11-15 13:00 A | 2019-06-11 15:00 | 69 | 75% | 40.25d |  |

| ID | WBS | Task | Duration | Start | Finish | Predecessors | Complete | Total float | Constraint |
| --- | --- | --- | --- | --- | --- | --- | --- | --- | --- |
| 71 | 3.4.3 | **DAO接口开发** | 147.75d | 2018-11-20 08:00 A | 2019-06-11 15:00 |  | 85% | 40.25d |  |
| 72 |  | 认证用户模块DAO接口开发 | 2d | 2018-11-20 08:00 A | 2018-11-21 17:00 A | 91 | 100% |  |  |
| 73 |  | 管理员模块DAO接口开发 | 2d | 2018-11-22 08:00 A | 2018-11-23 17:00 A | 72 | 100% |  |  |
| 74 |  | 教师模块DAO接口开发 | 3d | 2018-11-20 08:00 A | 2019-06-11 15:00 | 91 | 75% | 40.25d |  |
| 75 |  | 学生模块DAO接口开发 | 3d | 2018-11-20 08:00 A | 2019-06-11 15:00 | 91 | 75% | 40.25d |  |
| 76 | 3.4.4 | **servlet开发** | 142.75d | 2018-11-27 08:00 A | 2019-06-11 15:00 |  | 85% | 40.25d |  |
| 77 |  | 认证用户模块servlet开发 | 2d | 2018-11-27 08:00 A | 2018-11-28 17:00 A | 92 | 100% |  |  |
| 78 |  | 管理员模块servlet开发 | 2d | 2018-11-29 08:00 A | 2018-11-30 17:00 A | 77 | 100% |  |  |
| 79 |  | 教师模块servlet开发 | 3d | 2018-11-27 08:00 A | 2019-06-11 15:00 | 92 | 75% | 40.25d |  |
| 80 |  | 学生模块servlet开发 | 3d | 2018-11-27 08:00 A | 2019-06-11 15:00 | 92 | 75% | 40.25d |  |
| 81 |  | 开发评审会议 | 1d | 2018-12-03 08:00 A | 2018-12-03 17:00 A | 78, 79, 80 | 100% |  |  |
| 82 |  | 完成开发 | 0d | 2018-12-03 17:00 A | 2018-12-03 17:00 A | 81 | 100% |  |  |
| 83 | 3.5 | **测试** | 4d | 2018-12-04 08:00 A | 2018-12-07 17:00 A |  | 100% |  |  |
| 84 |  | 单元测试 | 2d | 2018-12-04 08:00 A | 2018-12-05 17:00 A | 82 | 100% |  |  |
| 85 |  | 整体测试 | 2d | 2018-12-06 08:00 A | 2018-12-07 17:00 A | 84 | 100% |  |  |
| 86 |  | 完成测试 | 0d | 2018-12-07 17:00 A | 2018-12-07 17:00 A | 85 | 100% |  |  |
| 87 |  | 部署 | 2d | 2018-12-11 08:00 A | 2018-12-12 17:00 A | 93 | 100% |  |  |
| 88 | 4 | **监控** | 46d | 2019-06-06 08:00 | 2019-07-25 17:00 |  | 100% |  |  |
| 89 |  | 第1次例会 | 1d | 2018-10-08 08:00 A | 2018-10-08 17:00 A | 23 | 100% |  | start no earlier than 2018-10-08 08:00 |
| 90 |  | 第2次例会 | 1d | 2018-10-15 08:00 A | 2018-10-15 17:00 A | 27, 32, 16 | 100% |  | start no earlier than 2018-10-15 08:00 |
| 91 |  | 第3次例会 | 1d | 2018-11-19 08:00 A | 2018-11-19 17:00 A | 68, 70 | 100% |  | start no earlier than 2018-11-12 08:00 |
| 92 |  | 第4次例会 | 1d | 2018-11-26 08:00 A | 2018-11-26 17:00 A | 73, 74, 75 | 100% |  | start no earlier than 2018-11-19 08:00 |
| 93 |  | 第5次例会 | 1d | 2018-12-10 08:00 A | 2018-12-10 17:00 A | 86 | 100% |  | start no earlier than 2018-11-26 08:00 |
| 94 | 5 | **收尾** | 3d | 2018-12-13 08:00 A | 2018-12-17 17:00 A |  | 100% |  |  |
| 95 |  | 整理文档 | 2d | 2018-12-13 08:00 A | 2018-12-14 17:00 A | 87 | 100% |  |  |
| 96 |  | 项目展示 | 1d | 2018-12-17 08:00 A | 2018-12-17 17:00 A | 95 | 100% |  |  |
| 97 |  | 完成项目 | 0d | 2018-12-17 17:00 A | 2018-12-17 17:00 A | 96 | 100% |  |  |

## Version 2 (saved 2019-06-12)

Note of the change: 更新分工

Last finish stays 2019-07-25. Complete tasks 48 → 44.

Changed:

| ID | Task | Start | Finish | Complete | Total float | Other |
| --- | --- | --- | --- | --- | --- | --- |
| 33 | 非功能性需求分析 |  |  |  |  | resources none → 杨健威; 林文卓; 刘杨栋 |
| 34 | 制作原型 |  |  |  |  | resources none → 高昊 |
| 35 | 需求评审会议 |  |  |  |  | resources none → 高昊; 杨健威; 刘杨栋 |
| 36 | 完成需求分析 | 2019-06-12 08:00 A → 2019-06-13 08:00 (+1d) |  |  | 38d → 0.2d | resources none → 卢俊宇 |
| 40 | 系统逻辑架构 |  |  |  |  | resources none → 吴志祥 |
| 41 | 系统物理结构 |  |  |  |  | resources none → 吴志祥 |
| 42 | 系统接口设计 |  | 2019-06-14 09:36 A → 2019-06-14 09:36 | 100% → 99% | none → 0d | resources none → 刘杨栋; 黄彬彬 |
| 43 | 约束和假定 |  | 2019-06-14 09:36 A → 2019-06-14 09:36 | 100% → 99% | none → 0d | resources none → 卢俊宇; 刘鼎力 |
| 44 | 非功能性设计 |  | 2019-06-14 09:36 A → 2019-06-14 09:36 | 100% → 99% | none → 37.8d | resources none → 卢俊宇; 刘鼎力 |
| 48 | 对象模型 |  |  |  |  | resources none → 黄彬彬; 刘杨栋; 卢俊宇; 曾帅博; 杨健威 |
| 49 | 产品录入模块详细设计 |  |  |  |  | resources none → 卢俊宇 |
| 50 | 产品审核模块详细设计 |  |  |  |  | resources none → 高昊; 黄彬彬 |
| 51 | 产品配置模块详细设计 |  |  |  |  | resources none → 林文卓; 刘杨栋 |
| 52 | 管理员模块详细设计 |  |  |  |  | resources none → 刘鼎力 |
| 53 | 用户评价模块详细分析 |  |  |  |  | resources none → 李振梁; 吴志祥 |
| 54 | 供应商管理模块详细设计 |  |  |  |  | resources none → 曾帅博 |
| 55 | 展示模块详细分析 |  |  |  |  | resources none → 杨健威 |
| 56 | 详细设计评审会议 |  |  |  |  | resources none → 刘杨栋; 曾帅博; 卢俊宇; 黄彬彬; 杨健威 |
| 59 | 系统概念模型 |  | 2019-06-15 12:00 A → 2019-06-15 12:00 | 100% → 99% | none → 36.5d | resources none → 刘杨栋; 黄彬彬 |
| 60 | 系统物理模型 |  |  |  |  | resources none → 黄彬彬 |
| 61 | 数据字典 |  |  |  |  | resources none → 曾帅博; 刘杨栋 |
| 62 | 系统数据模型设计评审会议 |  |  |  |  | resources none → 吴志祥; 杨健威 |
| 63 | 完成系统数据模型设计 | 2019-06-15 08:00 A → 2019-06-15 13:00 |  |  |  | resources none → 卢俊宇 |

## Version 3 (saved 2019-06-12)

Last finish stays 2019-07-25. Complete tasks 44 → 43.

Changed:

| ID | Task | Start | Finish | Complete | Total float | Other |
| --- | --- | --- | --- | --- | --- | --- |
| 38 | **概要设计** |  |  | 90% → 85% |  |  |
| 42 | 系统接口设计 |  |  | 99% → 50% |  | resources 刘杨栋; 黄彬彬 → 刘杨栋; 黄彬彬; 林文卓 |
| 45 | 概要设计评审会议 |  |  |  |  | resources none → 吴志祥; 杨健威 |
| 46 | 完成概要设计 | 2019-06-14 08:00 A → 2019-06-14 09:36 |  |  |  | resources none → 卢俊宇 |
| 60 | 系统物理模型 |  | 2019-06-15 12:00 A → 2019-06-15 12:00 | 100% → 99% | none → 36.5d | resources 黄彬彬 → 黄彬彬; 刘杨栋 |
